# Team2_ganttchart

Schedule from MS Project, 2022-04-01 to 2023-02-01, A marks actual dates.

## Calendars

- Standard: Mon-Fri 08:00-12:00, 13:00-17:00; Sat-Sun off. Exceptions (off unless hours are given): 2022-07-04 (Independence Day), 2022-09-05 (Labor Day), 2022-12-26 to 2022-12-30 (Christmas Holiday), 2023-01-16 (Martin Luther King Jr, Birthday).

## Schedule

| ID | WBS | Task | Duration | Start | Finish | Predecessors | Complete | Baseline start | Baseline finish | Baseline duration | Constraint |
| --- | --- | --- | --- | --- | --- | --- | --- | --- | --- | --- | --- |
| 1 | 1 | **Received data** | 22d | 2022-04-01 A | 2022-05-02 A |  | 100% | 2022-04-01 | 2022-04-26 | 18d |  |
| 2 | 1.1 | **Signed NDA** | 11d | 2022-04-01 A | 2022-04-15 A |  | 100% | 2022-04-01 | 2022-04-07 | 5d |  |
| 3 | 1.1.1 | Team Members sign & submit | 2d | 2022-04-01 A | 2022-04-04 A |  | 100% | 2022-04-01 | 2022-04-04 | 2d |  |
| 4 | 1.1.2 | Sponsor Approves NDAs | 1d | 2022-04-05 A | 2022-04-05 A | 3 | 100% | 2022-04-05 | 2022-04-05 | 1d |  |
| 5 | 1.1.3 | Data Released to Team | 2d | 2022-04-14 A | 2022-04-15 A | 4 | 100% | 2022-04-06 | 2022-04-07 | 2d | finish no earlier than 2022-04-15 |
| 6 | 1.2 | **Collected Data** | 6d | 2022-04-18 A | 2022-04-25 A |  | 100% | 2022-04-08 | 2022-04-15 | 6d |  |
| 7 | 1.2.1 | Create Extraction Tool | 3d | 2022-04-18 A | 2022-04-20 A | 5 | 100% | 2022-04-08 | 2022-04-12 | 3d |  |
| 8 | 1.2.2 | Creat Data Depository | 2d | 2022-04-18 A | 2022-04-19 A | 5 | 100% | 2022-04-08 | 2022-04-11 | 2d |  |
| 9 | 1.2.3 | Sort Released Data | 2d | 2022-04-18 A | 2022-04-19 A | 5 | 100% | 2022-04-08 | 2022-04-11 | 2d |  |
| 10 | 1.2.4 | Evaluate Data Dictionary | 3d | 2022-04-20 A | 2022-04-22 A | 9 | 100% | 2022-04-12 | 2022-04-14 | 3d |  |
| 11 | 1.2.5 | Create Data Backup | 1d | 2022-04-25 A | 2022-04-25 A | 10 | 100% | 2022-04-15 | 2022-04-15 | 1d |  |
| 12 | 1.3 | **Created data dictionary** | 5d | 2022-04-26 A | 2022-05-02 A |  | 100% | 2022-04-18 | 2022-04-22 | 5d |  |
| 13 | 1.3.1 | Interpret Data | 4d | 2022-04-26 A | 2022-04-29 A | 11 | 100% | 2022-04-18 | 2022-04-21 | 4d |  |
| 14 | 1.3.2 | Resolve questions with UCONNIC | 3d | 2022-04-26 A | 2022-04-28 A | 11 | 100% | 2022-04-18 | 2022-04-20 | 3d |  |
| 15 | 1.3.3 | Review Dictionary with Team | 1d | 2022-05-02 A | 2022-05-02 A | 13, 14 | 100% | 2022-04-22 | 2022-04-22 | 1d |  |
| 16 | 2 | **Cleaned data** | 31d | 2022-05-03 A | 2022-06-14 A |  | 100% | 2022-04-25 | 2022-06-08 | 33d |  |
| 17 | 2.1 | **Pre-processed data** | 22d | 2022-05-03 A | 2022-06-01 A |  | 100% | 2022-04-25 | 2022-05-24 | 22d |  |
| 18 | 2.1.1 | Format Data | 3d | 2022-05-03 A | 2022-05-05 A | 15 | 100% | 2022-04-25 | 2022-04-27 | 3d |  |
| 19 | 2.1.2 | Review Data Dictionary | 2d | 2022-05-06 A | 2022-05-09 A | 18 | 100% | 2022-04-28 | 2022-04-29 | 2d |  |
| 20 | 2.1.3 | Clean file for irrelevant data | 2d | 2022-05-10 A | 2022-05-11 A | 19 | 100% | 2022-05-02 | 2022-05-03 | 2d |  |
| 21 | 2.1.4 | Input missing data | 3d | 2022-05-12 A | 2022-05-16 A | 20 | 100% | 2022-05-04 | 2022-05-06 | 3d |  |
| 22 | 2.1.5 | Exclude outliers | 3d | 2022-05-17 A | 2022-05-19 A | 21 | 100% | 2022-05-09 | 2022-05-11 | 3d |  |
| 23 | 2.1.6 | Discussion data questions with UCONNIC | 3d | 2022-05-20 A | 2022-05-24 A | 22 | 100% | 2022-05-12 | 2022-05-16 | 3d |  |
| 24 | 2.1.7 | Adjust data as necessary | 3d | 2022-05-25 A | 2022-05-27 A | 23 | 100% | 2022-05-17 | 2022-05-19 | 3d |  |
| 25 | 2.1.8 | Final data review with UCONNIC | 3d | 2022-05-30 A | 2022-06-01 A | 24 | 100% | 2022-05-20 | 2022-05-24 | 3d |  |

| ID | WBS | Task | Duration | Start | Finish | Predecessors | Complete | Remaining | Baseline start | Baseline finish | Baseline duration | Total slack | Constraint |
| --- | --- | --- | --- | --- | --- | --- | --- | --- | --- | --- | --- | --- | --- |
| 26 | 2.2 | **Data Transformation** | 2d | 2022-06-02 A | 2022-06-03 A |  | 100% |  | 2022-05-25 | 2022-05-27 | 3d |  |  |
| 27 | 2.2.1 | Normalization | 2d | 2022-06-02 A | 2022-06-03 A | 25 | 100% |  | 2022-05-25 | 2022-05-26 | 2d |  |  |
| 28 | 2.2.2 | Make data adjustments | 1d | 2022-06-02 A | 2022-06-02 A | 25 | 100% |  | 2022-05-27 | 2022-05-27 | 1d |  |  |
| 29 | 2.3 | **Data Visualization** | 8d | 2022-06-03 A | 2022-06-14 A |  | 100% |  | 2022-05-30 | 2022-06-08 | 8d |  |  |
| 30 | 2.3.1 | Data exploration | 5d | 2022-06-03 A | 2022-06-09 A | 28 | 100% |  | 2022-05-30 | 2022-06-03 | 5d |  |  |
| 31 | 2.3.2 | Analyze data with visualization tools | 3d | 2022-06-03 A | 2022-06-07 A | 28 | 100% |  | 2022-05-30 | 2022-06-01 | 3d |  |  |
| 32 | 2.3.3 | Extract key information | 3d | 2022-06-03 A | 2022-06-07 A | 28 | 100% |  | 2022-05-30 | 2022-06-01 | 3d |  |  |
| 33 | 2.3.4 | Consult with UCONNIC | 3d | 2022-06-10 A | 2022-06-14 A | 32, 30, 31 | 100% |  | 2022-06-06 | 2022-06-08 | 3d |  | start no earlier than 2022-06-02 |
| 34 | 3 | **Finished Model** | 114d | 2022-06-15 A | 2022-11-23 |  | 57% | 49.4d | 2022-06-09 | 2022-12-06 | 127d | 0d |  |
| 35 | 3.1 | **Developed optical character recognition system** | 17d | 2022-06-15 A | 2022-07-08 A |  | 100% |  | 2022-06-09 | 2022-07-01 | 17d |  |  |
| 36 | 3.1.1 | OCR system created | 7d | 2022-06-15 A | 2022-06-23 A | 33 | 100% |  | 2022-06-09 | 2022-06-17 | 7d |  |  |
| 37 | 3.1.2 | OCR system tested | 5d | 2022-06-24 A | 2022-06-30 A | 36 | 100% |  | 2022-06-20 | 2022-06-24 | 5d |  |  |
| 38 | 3.1.3 | OCR system finalized | 5d | 2022-07-01 A | 2022-07-08 A | 37 | 100% |  | 2022-06-27 | 2022-07-01 | 5d |  |  |
| 39 | 3.2 | **Developed natural language processing system** | 20d | 2022-06-15 A | 2022-07-13 A |  | 100% |  | 2022-06-09 | 2022-07-07 | 20d |  |  |
| 40 | 3.2.1 | NLP system created | 10d | 2022-06-15 A | 2022-06-28 A | 33 | 100% |  | 2022-06-09 | 2022-06-22 | 10d |  |  |
| 41 | 3.2.2 | NLP system tested | 5d | 2022-06-29 A | 2022-07-06 A | 40 | 100% |  | 2022-06-23 | 2022-06-29 | 5d |  |  |
| 42 | 3.2.3 | NLP system finalized | 5d | 2022-07-07 A | 2022-07-13 A | 41 | 100% |  | 2022-06-30 | 2022-07-07 | 5d |  |  |
| 43 | 3.3 | **Created model** | 42d | 2022-06-15 A | 2022-08-12 A |  | 100% |  | 2022-07-08 | 2022-08-25 | 35d |  |  |
| 44 | 3.3.1 | Analyze 20 fields | 10d | 2022-06-15 A | 2022-06-28 A | 33 | 100% |  | 2022-07-08 | 2022-07-21 | 10d |  |  |
| 45 | 3.3.2 | Get business insight to get column relevance | 3d | 2022-06-15 A | 2022-06-17 A | 33 | 100% |  | 2022-07-22 | 2022-07-26 | 3d |  |  |
| 46 | 3.3.3 | Prioritize Fields | 3d | 2022-06-15 A | 2022-06-17 A | 33 | 100% |  | 2022-07-22 | 2022-07-26 | 3d |  |  |
| 47 | 3.3.4 | Integrate OCR and NLP systems to the model | 10d | 2022-07-14 A | 2022-07-27 A | 38, 42 | 100% |  | 2022-07-27 | 2022-08-09 | 10d |  |  |
| 48 | 3.3.5 | Decide modeling technique | 5d | 2022-07-28 A | 2022-08-03 A | 47 | 100% |  | 2022-08-10 | 2022-08-16 | 5d |  |  |
| 49 | 3.3.6 | Try different modeling algorithm | 3d | 2022-08-04 A | 2022-08-08 A | 48 | 100% |  | 2022-08-17 | 2022-08-19 | 3d |  |  |
| 50 | 3.3.7 | Compare the right modeling technique | 3d | 2022-08-09 A | 2022-08-11 A | 49 | 100% |  | 2022-08-22 | 2022-08-24 | 3d |  |  |
| 51 | 3.3.8 | Select best modeling technique | 1d | 2022-08-12 A | 2022-08-12 A | 50 | 100% |  | 2022-08-25 | 2022-08-25 | 1d |  |  |

| ID | WBS | Task | Duration | Start | Finish | Predecessors | Complete | Remaining | Baseline start | Baseline finish | Baseline duration | Total slack |
| --- | --- | --- | --- | --- | --- | --- | --- | --- | --- | --- | --- | --- |
| 52 | 3.4 | **Trained Model** | 52d | 2022-08-15 A | 2022-10-26 |  | 19% | 42d | 2022-08-26 | 2022-11-08 | 52d | 0d |
| 53 | 3.4.1 | Train Model - Itteration 1 | 10d | 2022-08-15 A | 2022-08-26 A | 51 | 100% |  | 2022-08-26 | 2022-09-09 | 10d |  |
| 54 | 3.4.2 | Assess Model with UCONN SMEs | 3d | 2022-08-29 | 2022-08-31 | 53 |  |  | 2022-09-12 | 2022-09-14 | 3d | 0d |
| 55 | 3.4.3 | Train Model - Itteration 2 | 10d | 2022-09-01 | 2022-09-15 | 54 |  |  | 2022-09-15 | 2022-09-28 | 10d | 0d |
| 56 | 3.4.4 | Assess Model with UCONN SMEs | 3d | 2022-09-16 | 2022-09-20 | 55 |  |  | 2022-09-29 | 2022-10-03 | 3d | 0d |
| 57 | 3.4.5 | Train Model - Itteration 3 | 10d | 2022-09-21 | 2022-10-04 | 56 |  |  | 2022-10-04 | 2022-10-17 | 10d | 0d |
| 58 | 3.4.6 | Assess Model with UCONN SMEs | 3d | 2022-10-05 | 2022-10-07 | 57 |  |  | 2022-10-18 | 2022-10-20 | 3d | 0d |
| 59 | 3.4.7 | Train Model - Itteration 4 | 10d | 2022-10-10 | 2022-10-21 | 58 |  |  | 2022-10-21 | 2022-11-03 | 10d | 0d |
| 60 | 3.4.8 | Assess Model with UCONN SMEs | 3d | 2022-10-24 | 2022-10-26 | 59 |  |  | 2022-11-04 | 2022-11-08 | 3d | 0d |
| 61 | 3.5 | **Validated Model** | 6d | 2022-10-27 | 2022-11-03 |  |  |  | 2022-11-09 | 2022-11-16 | 6d | 0d |
| 62 | 3.5.1 | Validation against Training Data - Final | 3d | 2022-10-27 | 2022-10-31 | 60 |  |  | 2022-11-09 | 2022-11-11 | 3d | 0d |
| 63 | 3.5.2 | Test with Holdback data - Final | 3d | 2022-11-01 | 2022-11-03 | 62 |  |  | 2022-11-14 | 2022-11-16 | 3d | 0d |
| 64 | 3.6 | **Tested Model** | 7d | 2022-11-04 | 2022-11-14 |  |  |  | 2022-11-17 | 2022-11-25 | 7d | 0d |
| 65 | 3.6.1 | Finalize testing approach | 2d | 2022-11-04 | 2022-11-07 | 63 |  |  | 2022-11-17 | 2022-11-18 | 2d | 0d |
| 66 | 3.6.2 | Final Tests Completed | 5d | 2022-11-08 | 2022-11-14 | 65 |  |  | 2022-11-21 | 2022-11-25 | 5d | 0d |
| 67 | 3.7 | **Finalized Model** | 7d | 2022-11-15 | 2022-11-23 |  |  |  | 2022-11-28 | 2022-12-06 | 7d | 0d |
| 68 | 3.7.1 | Review Model with COO | 2d | 2022-11-15 | 2022-11-16 | 66 |  |  | 2022-11-28 | 2022-11-29 | 2d | 0d |
| 69 | 3.7.2 | Review Model with CIO | 2d | 2022-11-15 | 2022-11-16 | 66 |  |  | 2022-11-28 | 2022-11-29 | 2d | 0d |
| 70 | 3.7.3 | Review Model with Allan | 1d | 2022-11-15 | 2022-11-15 | 66 |  |  | 2022-11-28 | 2022-11-28 | 1d | 1d |
| 71 | 3.7.4 | Implement suggestions | 5d | 2022-11-17 | 2022-11-23 | 68, 69, 70 |  |  | 2022-11-30 | 2022-12-06 | 5d | 0d |
| 72 | 4 | **Trained Genpact Users** | 27d | 2022-11-24 | 2023-01-06 |  |  |  | 2022-12-07 | 2023-01-20 | 27d | 0d |
| 73 | 4.1 | **Prepared training sessions** | 10d | 2022-11-24 | 2022-12-07 |  |  |  | 2022-12-07 | 2022-12-20 | 10d | 0d |
| 74 | 4.1.1 | Create training material | 5d | 2022-11-24 | 2022-11-30 | 71 |  |  | 2022-12-07 | 2022-12-13 | 5d | 0d |
| 75 | 4.1.2 | Schedule training sessions | 2d | 2022-11-24 | 2022-11-25 | 71 |  |  | 2022-12-07 | 2022-12-08 | 2d | 3d |
| 76 | 4.1.3 | Reharse training sessions | 5d | 2022-12-01 | 2022-12-07 | 74, 75 |  |  | 2022-12-14 | 2022-12-20 | 5d | 0d |
| 77 | 4.2 | Conducted training sessions | 10d | 2022-12-08 | 2022-12-21 | 76 |  |  | 2022-12-21 | 2023-01-10 | 10d | 0d |

| ID | WBS | Task | Duration | Start | Finish | Predecessors | Baseline start | Baseline finish | Baseline duration | Total slack | Free slack |
| --- | --- | --- | --- | --- | --- | --- | --- | --- | --- | --- | --- |
| 78 | 4.3 | **Evaluated training** | 6d | 2022-12-22 | 2023-01-05 |  | 2023-01-11 | 2023-01-19 | 6d | 17d |  |
| 79 | 4.3.1 | Test staff with exams | 3d | 2022-12-22 | 2023-01-02 | 77 | 2023-01-11 | 2023-01-13 | 3d | 17d | 0d |
| 80 | 4.3.2 | Review exams | 1d | 2023-01-03 | 2023-01-03 | 79 | 2023-01-17 | 2023-01-17 | 1d | 19d | 2d |
| 81 | 4.3.3 | Review errors with failing users | 3d | 2023-01-03 | 2023-01-05 | 79 | 2023-01-17 | 2023-01-19 | 3d | 17d | 0d |
| 82 | 4.4 | Training sign-off | 1d | 2023-01-06 | 2023-01-06 | 81, 80 | 2023-01-20 | 2023-01-20 | 1d | 17d |  |
| 83 | 5 | **Integrated Model Workflow** | 24d | 2022-12-22 | 2023-02-01 |  | 2023-01-11 | 2023-02-14 | 24d | 0d |  |
| 84 | 5.1 | **Model Integration** | 16d | 2022-12-22 | 2023-01-20 |  | 2023-01-11 | 2023-02-02 | 16d | 0d |  |
| 85 | 5.1.1 | Meet with UCONNIC IT team | 2d | 2022-12-22 | 2022-12-23 | 77 | 2023-01-11 | 2023-01-12 | 2d | 0d |  |
| 86 | 5.1.2 | Integrate model | 10d | 2023-01-02 | 2023-01-13 | 85 | 2023-01-13 | 2023-01-27 | 10d | 0d |  |
| 87 | 5.1.3 | Validate model performance | 3d | 2023-01-17 | 2023-01-19 | 86 | 2023-01-30 | 2023-02-01 | 3d | 0d |  |
| 88 | 5.1.4 | Model integration sign-off | 1d | 2023-01-20 | 2023-01-20 | 87 | 2023-02-02 | 2023-02-02 | 1d | 0d |  |
| 89 | 5.2 | **Project sign-off** | 8d | 2023-01-23 | 2023-02-01 |  | 2023-02-03 | 2023-02-14 | 8d | 0d |  |
| 90 | 5.2.1 | Model Tested in Stage | 5d | 2023-01-23 | 2023-01-27 | 88 | 2023-02-03 | 2023-02-09 | 5d | 0d |  |
| 91 | 5.2.2 | Model Deployed | 2d | 2023-01-30 | 2023-01-31 | 90 | 2023-02-10 | 2023-02-13 | 2d | 0d |  |
| 92 | 5.2.3 | Final Presentation to UCONNIC CEO | 1d | 2023-02-01 | 2023-02-01 | 91 | 2023-02-14 | 2023-02-14 | 1d | 0d |  |
