# Pg 230 loaded and leveled

Schedule from MS Project, 2017-01-02 to 2017-03-31.

## Calendars

- Standard: Mon-Fri 08:00-12:00, 13:00-17:00; Sat-Sun off.

## Resources

| Resource |
| --- |
| Alison |
| Link |
| Splient |
| Legal |
| CFO |
| Proj. Steering Team |
| Alison Test |

## Schedule

| ID | WBS | Task | Type | Duration | Start | Finish | Predecessors | Total slack | Free slack | Resources | Work |
| --- | --- | --- | --- | --- | --- | --- | --- | --- | --- | --- | --- |
| 1 | 1 | **Medical/Health services determined** |  | 64.5d | 2017-01-02 | 2017-03-31 |  | 0d |  |  | 652h |
| 2 | 1.1 | **Physical health assessment tool for residents developed** |  | 32.25d | 2017-01-02 | 2017-02-15 |  | 0d |  |  | 172h |
| 3 | 1.1.1 | Develop tool |  | 2w | 2017-01-02 | 2017-01-13 |  | 2d | 0d | Alison; Link | 160h |
| 4 | 1.1.2 | Test of assessment tool conducted by physicians |  | 12h | 2017-01-16 | 2017-01-25 | 3 | 0d |  | Link; Alison Test | 12h |
| 5 | 1.1.3 | Revise tool as necessary |  | 1w | 2017-01-25 | 2017-02-01 | 4 | 0d |  |  |  |
| 6 | 1.1.4 | Test of tool conducted by other health professionals |  | 2w | 2017-02-01 | 2017-02-15 | 5 | 0d |  |  |  |
| 7 | 1.2 | Admission & discharge criteria finalized |  | 1.5w | 2017-02-15 | 2017-02-24 | 6 | 0d |  | Alison; Splient | 120h |
| 8 | 1.3 | Investigate copyrighting assessment tool |  | 3w | 2017-01-25 | 2017-02-15 | 4 | 32.25d | 7.5d | Legal | 120h |
| 9 | 1.4 | Assessment tool finalized | milestone | 0d | 2017-02-24 | 2017-02-24 | 7 | 0d |  |  |  |
| 10 | 1.5 | Copyright tool | milestone | 0d | 2017-02-24 | 2017-02-24 | 8, 9 | 24.75d |  |  |  |
| 11 | 1.6 | **Financial impact of health services determined** |  | 24.75d | 2017-02-24 | 2017-03-31 |  | 0d |  |  | 240h |
| 12 | 1.6.1 | Costs determined |  | 1w | 2017-02-24 | 2017-03-03 | 9 | 0d |  | Alison; CFO | 80h |
| 13 | 1.6.2 | Scope of health services determined to include in base rate |  | 2w | 2017-03-03 | 2017-03-17 | 12 | 9.75d |  | Proj. Steering Team | 80h |
| 14 | 1.6.3 | Scope of services to provide on a fee for service basis |  | 2w | 2017-03-03 | 2017-03-31 | 12 | 0d |  | Proj. Steering Team | 80h |
| 15 | 1.6.4 | Finalize services and programs to be offered | milestone | 0d | 2017-03-31 | 2017-03-31 | 13, 14 | 0d |  |  |  |
